wbs_id,parent_id,name,is_leaf,budget_inr,planned_start_period,planned_finish_period,curve
1,,Preliminaries and Site Establishment,N
1.1,1,Site mobilisation and enabling works,Y,2500000,1,2,linear
1.2,1,"Site office, stores and labour accommodation",Y,1800000,1,2,linear
2,,Substructure,N
2.1,2,Excavation and earthwork,Y,4200000,1,3,linear
2.2,2,PCC and footings,Y,6800000,2,4,s
2.3,2,Foundation RCC up to plinth,Y,9500000,3,5,s
2.4,2,Plinth beams and backfilling,Y,3800000,4,5,linear
3,,Superstructure,N
3.1,3,"RCC columns, ground to fourth floor",Y,14500000,5,9,s
3.2,3,"RCC beams and slabs, ground to fourth floor",Y,21000000,5,10,s
3.3,3,Staircase and lift core RCC,Y,5500000,6,10,linear
4,,Masonry and Finishes,N
4.1,4,Block masonry,Y,8800000,7,11,s
4.2,4,Internal plaster,Y,5200000,9,12,s
4.3,4,External plaster and texture finish,Y,4600000,9,12,linear
4.4,4,"Flooring, vitrified tile and kota stone",Y,9500000,10,12,s
4.5,4,"Painting, internal and external",Y,6200000,11,12,linear
5,,Building Services,N
5.1,5,Internal electrification,Y,10500000,7,12,s
5.2,5,Plumbing and sanitary installation,Y,7200000,7,12,s
5.3,5,HVAC and fire fighting,Y,9800000,9,12,s
6,,External Works and Handover,N
6.1,6,External development and landscaping,Y,5800000,10,12,linear
6.2,6,"Testing, commissioning and handover",Y,2800000,12,12,linear
