wbs_id,parent_id,name,is_leaf,budget_inr,planned_start_period,planned_finish_period,curve
1,,Preliminaries,N
1.1,1,Mobilisation and site establishment,Y,1800000,1,2,linear
1.2,1,Temporary works and dewatering,Y,1200000,1,3,linear
2,,Intake and Raw Water,N
2.1,2,Intake structure civil works,Y,9500000,2,5,s
2.2,2,Raw water pumping station,Y,7000000,3,6,s
2.3,2,Raw water rising main,Y,5500000,4,7,linear
3,,Treatment Units,N
3.1,3,Flash mixer and flocculator,Y,6000000,4,7,s
3.2,3,Clarifier units,Y,11000000,5,8,s
3.3,3,Filter beds,Y,12500000,6,9,s
3.4,3,Chlorination and dosing house,Y,4800000,7,9,linear
4,,Clear Water and Distribution,N
4.1,4,Clear water sump and pump house,Y,8500000,7,10,s
4.2,4,Treated water rising main,Y,5200000,8,10,linear
5,,"Electrical, Instrumentation and Handover",N
5.1,5,Electrical and SCADA installation,Y,9000000,7,10,s
5.2,5,"Testing, commissioning and handover",Y,3000000,10,10,linear
